# SMSC Project Plan Iter2

Schedule from MS Project, 2002-03-18 to 2002-05-24, A marks actual dates.
Novosoft

## Calendars

- Standard: Mon-Fri 08:00-12:00, 13:00-17:00; Sat-Sun off. Exceptions (off unless hours are given): 2002-05-01 to 2002-05-02, 2002-05-09.

## Resources

| Resource |
| --- |
| Луговой Сергей |
| Рыжков Виктор |
| Ступник Константин |
| Чен Алексей |
| Макаров Виктор |
| Каляткин Игорь |
| Брызгалов Виталий |
| Documenter |

## Schedule

| ID | WBS | Task | Duration | Start | Finish | Predecessors | Complete | Remaining | Baseline start | Baseline finish | Baseline duration | Total slack | Free slack | Constraint | Resources | Work | Actual work |
| --- | --- | --- | --- | --- | --- | --- | --- | --- | --- | --- | --- | --- | --- | --- | --- | --- | --- |
| 1 | 1 | **2. Разработка базовой функциональности центра** | 47d | 2002-03-18 A | 2002-05-24 |  | 10% | 42.48d | 2002-03-18 | 2002-05-24 | 50d | 0d |  |  | Луговой Сергей | 2189.6h | 326.56h |
| 2 | 1.1 | **SMSC Core** | 46d | 2002-03-18 A | 2002-05-24 |  | 16% | 38.48d | 2002-03-18 | 2002-05-24 | 46d | 1d |  |  |  | 1082.2h | 185.4h |
| 3 | 1.1.1 | **Прототип SMS центра** | 26d | 2002-03-18 A | 2002-04-22 |  | 30% | 18.31d | 2002-03-18 | 2002-04-22 | 26d | 11d | 9.5d |  |  | 342.2h | 95h |
| 4 | 1.1.1.1 | **SME Manager** | 23d | 2002-03-18 A | 2002-04-17 |  | 61% | 8.87d | 2002-03-18 | 2002-04-17 | 23d | 14d |  |  |  | 129.4h | 75h |
| 5 | 1.1.1.1.1 | Архитектура | 4.1d | 2002-03-18 A | 2002-03-26 |  | 90% | 0.4d | 2002-03-18 | 2002-03-21 | 4d | 24.5d | 8.5d | start no earlier than 2002-03-18 | Чен Алексей [200%]; Рыжков Виктор [50%] | 30.4h | 24h |
| 6 | 1.1.1.1.2 | Разработка | 6.5d | 2002-03-19 A | 2002-03-28 A | 5 | 100% |  | 2002-03-22 | 2002-03-25 | 2d |  |  |  | Чен Алексей [200%] | 51h | 51h |
| 7 | 1.1.1.1.3 | Тесткейсы | 3d | 2002-04-08 | 2002-04-10 | 5 |  |  | 2002-04-08 | 2002-04-10 | 3d | 16d | 2d | start no earlier than 2002-04-08 | Брызгалов Виталий [50%] | 12h |  |
| 8 | 1.1.1.1.4 | Тестирование | 3d | 2002-04-15 | 2002-04-17 | 7, 6 |  |  | 2002-04-15 | 2002-04-17 | 3d | 14d |  | start no earlier than 2002-04-15 | Брызгалов Виталий [50%]; Чен Алексей | 36h |  |
| 9 | 1.1.1.2 | **SMPP transport support** | 19d | 2002-03-27 A | 2002-04-22 |  | 13% | 16.47d | 2002-03-25 | 2002-04-22 | 21d | 11d |  |  |  | 120h | 20h |
| 10 | 1.1.1.2.1 | Архитектура | 5.5d | 2002-03-27 A | 2002-04-03 |  | 30% | 3.83d | 2002-03-25 | 2002-03-29 | 5d | 1.5d | 0d | start no earlier than 2002-03-25 | Рыжков Виктор [50%]; Ступник Константин | 60h | 20h |
| 11 | 1.1.1.2.2 | Разработка | 2d | 2002-04-03 | 2002-04-05 | 10 |  |  | 2002-04-01 | 2002-04-02 | 2d | 1.5d | 0d |  | Ступник Константин | 16h |  |
| 12 | 1.1.1.2.3 | Тесткейсы | 2d | 2002-04-11 | 2002-04-12 | 10 |  |  | 2002-04-11 | 2002-04-12 | 2d | 14d | 3d | finish no earlier than 2002-04-12 | Брызгалов Виталий [50%] | 8h |  |
| 13 | 1.1.1.2.4 | Тестирование | 3d | 2002-04-18 | 2002-04-22 | 12, 11 |  |  | 2002-04-18 | 2002-04-22 | 3d | 11d |  | start no earlier than 2002-04-18 | Брызгалов Виталий [50%]; Ступник Константин | 36h |  |
| 14 | 1.1.1.3 | **SMSC application** | 9.5d | 2002-04-05 | 2002-04-18 | 6, 11 |  |  | 2002-04-03 | 2002-04-18 | 12d | 1.5d |  |  |  | 67.2h |  |
| 15 | 1.1.1.3.1 | Архитектура | 2d | 2002-04-05 | 2002-04-09 |  |  |  | 2002-04-03 | 2002-04-04 | 2d | 1.5d | 0d | start no earlier than 2002-04-03 | Ступник Константин; Рыжков Виктор [20%] | 19.2h |  |
| 16 | 1.1.1.3.2 | Разработка | 2d | 2002-04-09 | 2002-04-11 | 15 |  |  | 2002-04-05 | 2002-04-08 | 2d | 1.5d | 0d | finish no earlier than 2002-04-08 | Ступник Константин | 16h |  |
| 17 | 1.1.1.3.3 | Тесткейсы | 2d | 2002-04-15 | 2002-04-16 | 16 |  |  | 2002-04-15 | 2002-04-16 | 2d | 13d | 0d | start no earlier than 2002-04-15 | Брызгалов Виталий [50%] | 8h |  |
| 18 | 1.1.1.3.4 | Тестирование | 2d | 2002-04-17 | 2002-04-18 | 16, 17, 19 |  |  | 2002-04-17 | 2002-04-18 | 2d | 13d |  |  | Брызгалов Виталий [50%]; Ступник Константин | 24h |  |
| 19 | 1.1.1.4 | **Dummy SME** | 3d | 2002-04-11 | 2002-04-16 | 16 |  |  | 2002-04-09 | 2002-04-11 | 3d | 1.5d | 0.5d |  |  | 25.6h |  |
| 20 | 1.1.1.4.1 | Архитектура | 1d | 2002-04-11 | 2002-04-12 |  |  |  | 2002-04-09 | 2002-04-09 | 1d | 1.5d | 0d | start no earlier than 2002-04-05 | Ступник Константин; Рыжков Виктор [20%] | 9.6h |  |
| 21 | 1.1.1.4.2 | Разработка | 2d | 2002-04-12 | 2002-04-16 | 20 |  |  | 2002-04-10 | 2002-04-11 | 2d | 1.5d | 0d |  | Ступник Константин | 16h |  |
| 22 | 1.1.2 | **Router** | 21d | 2002-03-29 A | 2002-04-26 | 6 | 30% | 14.7d | 2002-03-28 | 2002-04-26 | 22d | 7d | 5.5d |  | Чен Алексей | 300h | 90.4h |
| 23 | 1.1.2.1 | Архитектура | 5d | 2002-03-29 A | 2002-04-03 |  | 30% | 3.5d | 2002-03-28 | 2002-04-02 | 4d | 12d | 0d | finish no earlier than 2002-04-02 | Чен Алексей; Рыжков Виктор [50%] | 48h | 16h |
| 24 | 1.1.2.2 | Разработка | 5d | 2002-04-01 A | 2002-04-05 | 23 | 60% | 2d | 2002-04-03 | 2002-04-09 | 5d | 13d | 5d |  | Чен Алексей | 40h | 24h |
| 25 | 1.1.2.3 | Тесткейсы | 2d | 2002-04-22 | 2002-04-23 | 23 |  |  | 2002-04-22 | 2002-04-23 | 2d | 7d | 0d | start no earlier than 2002-04-22 | Брызгалов Виталий [50%] | 8h |  |
| 26 | 1.1.2.4 | Тестирование | 3d | 2002-04-24 | 2002-04-26 | 24, 25 |  |  | 2002-04-24 | 2002-04-26 | 3d | 7d |  |  | Брызгалов Виталий [50%]; Чен Алексей | 36h |  |

| ID | WBS | Task | Type | Duration | Start | Finish | Predecessors | Complete | Remaining | Baseline start | Baseline finish | Baseline duration | Total slack | Free slack | Constraint | Resources | Work | Actual work |
| --- | --- | --- | --- | --- | --- | --- | --- | --- | --- | --- | --- | --- | --- | --- | --- | --- | --- | --- |
| 27 | 1.1.3 | **Aliasing** |  | 14d | 2002-04-16 | 2002-05-08 | 11, 16, 21 |  |  | 2002-04-12 | 2002-05-03 | 14d | 1.5d | 0d |  |  | 132h |  |
| 28 | 1.1.3.1 | Архитектура |  | 4d | 2002-04-16 | 2002-04-22 |  |  |  | 2002-04-12 | 2002-04-17 | 4d | 1.5d | 0d | finish no earlier than 2002-04-02 | Рыжков Виктор [50%]; Ступник Константин | 48h |  |
| 29 | 1.1.3.2 | Разработка |  | 5d | 2002-04-22 | 2002-04-29 | 28 |  |  | 2002-04-18 | 2002-04-24 | 5d | 1.5d | 0d |  | Ступник Константин | 40h |  |
| 30 | 1.1.3.3 | Тесткейсы |  | 2d | 2002-04-29 | 2002-05-03 | 28, 29 |  |  | 2002-04-25 | 2002-04-26 | 2d | 1.5d | 0d | start no earlier than 2002-04-08 | Брызгалов Виталий [50%] | 8h |  |
| 31 | 1.1.3.4 | Тестирование |  | 3d | 2002-05-03 | 2002-05-08 | 29, 30 |  |  | 2002-04-29 | 2002-05-03 | 3d | 1.5d |  |  | Брызгалов Виталий [50%]; Ступник Константин | 36h |  |
| 32 | 1.1.4 | **Шедулер (передоставщик)** |  | 9d | 2002-04-15 | 2002-04-25 | 24 |  |  | 2002-04-15 | 2002-04-25 | 9d | 8d | 6.5d |  |  | 100h |  |
| 33 | 1.1.4.1 | Архитектура |  | 2d | 2002-04-15 | 2002-04-16 |  |  |  | 2002-04-15 | 2002-04-16 | 2d | 8d | 0d | start no earlier than 2002-04-15 | Рыжков Виктор [50%]; Чен Алексей | 24h |  |
| 34 | 1.1.4.2 | Разработка |  | 4d | 2002-04-17 | 2002-04-22 | 33 |  |  | 2002-04-17 | 2002-04-22 | 4d | 8d | 0d |  | Чен Алексей | 32h |  |
| 35 | 1.1.4.3 | Тесткейсы |  | 2d | 2002-04-17 | 2002-04-18 | 33 |  |  | 2002-04-17 | 2002-04-18 | 2d | 10d | 2d |  | Брызгалов Виталий [50%] | 8h |  |
| 36 | 1.1.4.4 | Тестирование |  | 3d | 2002-04-23 | 2002-04-25 | 34, 35 |  |  | 2002-04-23 | 2002-04-25 | 3d | 8d |  |  | Брызгалов Виталий; Чен Алексей [50%] | 36h |  |
| 37 | 1.1.5 | Первый билд ядра | milestone | 0d | 2002-05-08 | 2002-05-08 | 27, 32, 22, 3 |  |  | 2002-05-06 | 2002-05-06 | 0d | 1.5d | 0d | start no earlier than 2002-05-06 |  |  |  |
| 38 | 1.1.6 | MAP support (research) |  | 10d | 2002-05-08 | 2002-05-23 | 37 |  |  | 2002-05-07 | 2002-05-21 | 10d | 1.5d |  | start no earlier than 2002-05-07 | Ступник Константин [50%]; Чен Алексей [50%]; Рыжков Виктор [50%] | 120h |  |
| 39 | 1.1.7 | Тесткейсы |  | 4d | 2002-05-07 | 2002-05-13 | 28, 23 |  |  | 2002-05-07 | 2002-05-13 | 4d | 3d | 0d | start no earlier than 2002-05-07 | Брызгалов Виталий [50%] | 16h |  |
| 40 | 1.1.8 | Тестирование |  | 6d | 2002-05-14 | 2002-05-21 | 37, 39 |  |  | 2002-05-14 | 2002-05-21 | 6d | 3d | 2d | start no earlier than 2002-05-06 | Брызгалов Виталий [50%]; Чен Алексей [50%]; Ступник Константин [50%] | 72h |  |
| 41 | 1.1.9 | Альфа версия ядра | milestone | 0d | 2002-05-24 | 2002-05-24 | 40 |  |  | 2002-05-24 | 2002-05-24 | 0d | 1d |  | start no earlier than 2002-05-24 |  |  |  |
| 42 | 1.2 | **Система хранения сообщений** |  | 37d | 2002-03-18 A | 2002-05-10 |  | 34% | 24.39d | 2002-03-18 | 2002-05-08 | 36d | 10d |  |  |  | 431.4h | 105h |
| 43 | 1.2.1 | **Status update** |  | 4d | 2002-03-18 A | 2002-03-21 A |  | 100% |  | 2002-03-18 | 2002-03-20 | 3d |  |  |  |  | 36h | 36h |
| 44 | 1.2.1.1 | Архитектура |  | 1.12d | 2002-03-18 A | 2002-03-19 A |  | 100% |  | 2002-03-18 | 2002-03-18 | 1d |  |  |  | Макаров Виктор [300%] | 10h | 10h |
| 45 | 1.2.1.2 | Разработка |  | 2d | 2002-03-19 A | 2002-03-21 A | 44 | 100% |  | 2002-03-19 | 2002-03-19 | 1d |  |  |  | Макаров Виктор [75%] | 12h | 12h |
| 46 | 1.2.1.3 | Тесткейсы |  | 0.88d | 2002-03-19 A | 2002-03-19 A | 44 | 100% |  | 2002-03-19 | 2002-03-19 | 0.5d |  |  |  | Брызгалов Виталий | 7h | 7h |
| 47 | 1.2.1.4 | Тестирование |  | 1d | 2002-03-20 A | 2002-03-20 A | 46, 45 | 100% |  | 2002-03-20 | 2002-03-20 | 1d |  |  |  | Брызгалов Виталий [87.5%]; Макаров Виктор | 7h | 7h |
| 48 | 1.2.2 | **Архиватор** |  | 11d | 2002-03-19 A | 2002-04-02 A | 43 | 100% |  | 2002-03-21 | 2002-04-02 | 9d |  |  |  |  | 69h | 69h |
| 49 | 1.2.2.1 | Архитектура |  | 3d | 2002-03-19 A | 2002-03-25 A |  | 100% |  | 2002-03-21 | 2002-03-25 | 3d |  |  |  | Макаров Виктор; Рыжков Виктор [50%]; Брызгалов Виталий [50%] | 23.5h | 23.5h |
| 50 | 1.2.2.2 | Разработка |  | 2d | 2002-03-28 A | 2002-03-29 A | 49 | 100% |  | 2002-03-26 | 2002-03-28 | 3d |  |  |  | Макаров Виктор | 16h | 16h |
| 51 | 1.2.2.3 | Тесткейсы |  | 1d | 2002-03-29 A | 2002-03-29 A | 49 | 100% |  | 2002-03-27 | 2002-03-27 | 1d |  |  | start no earlier than 2002-03-27 | Брызгалов Виталий [50%] | 4h | 4h |
| 52 | 1.2.2.4 | Тестирование |  | 4d | 2002-03-29 A | 2002-04-02 A | 51, 50 | 100% |  | 2002-03-29 | 2002-04-02 | 3d |  |  |  | Макаров Виктор [62.5%]; Брызгалов Виталий [50%] | 25.5h | 25.5h |

| ID | WBS | Task | Type | Duration | Start | Finish | Predecessors | Baseline start | Baseline finish | Baseline duration | Total slack | Free slack | Constraint | Resources | Work |
| --- | --- | --- | --- | --- | --- | --- | --- | --- | --- | --- | --- | --- | --- | --- | --- |
| 53 | 1.2.3 | **Доработка системы хранения** |  | 11d | 2002-04-04 | 2002-04-18 | 48 | 2002-04-04 | 2002-04-18 | 11d | 11d | 1d |  |  | 130.4h |
| 54 | 1.2.3.1 | Архитектура |  | 4d | 2002-04-04 | 2002-04-09 |  | 2002-04-04 | 2002-04-09 | 4d | 11d | 0d | start no earlier than 2002-04-04 | Рыжков Виктор [20%]; Брызгалов Виталий [50%]; Макаров Виктор | 54.4h |
| 55 | 1.2.3.2 | Разработка |  | 4d | 2002-04-10 | 2002-04-15 | 54 | 2002-04-10 | 2002-04-15 | 4d | 11d | 0d |  | Макаров Виктор | 32h |
| 56 | 1.2.3.3 | Тесткейсы |  | 2d | 2002-04-10 | 2002-04-11 | 54 | 2002-04-10 | 2002-04-11 | 2d | 13d | 2d |  | Брызгалов Виталий [50%] | 8h |
| 57 | 1.2.3.4 | Тестирование |  | 3d | 2002-04-16 | 2002-04-18 | 55, 56 | 2002-04-16 | 2002-04-18 | 3d | 11d |  |  | Брызгалов Виталий [50%]; Макаров Виктор | 36h |
| 58 | 1.2.4 | **Запросы для шедулера** |  | 7d | 2002-04-22 | 2002-04-30 | 53, 33 | 2002-04-22 | 2002-04-30 | 7d | 10d | 0d |  |  | 88h |
| 59 | 1.2.4.1 | Архитектура |  | 2d | 2002-04-22 | 2002-04-23 |  | 2002-04-22 | 2002-04-23 | 2d | 10d | 0d | start no earlier than 2002-04-22 | Брызгалов Виталий [50%]; Рыжков Виктор [25%]; Макаров Виктор | 28h |
| 60 | 1.2.4.2 | Разработка |  | 2d | 2002-04-24 | 2002-04-25 | 59 | 2002-04-24 | 2002-04-25 | 2d | 10d | 0d |  | Макаров Виктор | 16h |
| 61 | 1.2.4.3 | Тесткейсы |  | 1d | 2002-04-24 | 2002-04-24 | 59 | 2002-04-24 | 2002-04-24 | 1d | 11d | 1d |  | Брызгалов Виталий | 8h |
| 62 | 1.2.4.4 | Тестирование |  | 3d | 2002-04-26 | 2002-04-30 | 60, 61 | 2002-04-26 | 2002-04-30 | 3d | 10d |  |  | Макаров Виктор; Брызгалов Виталий [50%] | 36h |
| 63 | 1.2.5 | Оптимизация индексов таблиц |  | 3d | 2002-05-06 | 2002-05-08 | 58 | 2002-05-06 | 2002-05-08 | 3d | 11d |  | start no earlier than 2002-05-06 | Макаров Виктор; Брызгалов Виталий | 48h |
| 64 | 1.2.6 | Performance and stress testing |  | 5d | 2002-05-03 | 2002-05-10 | 58 | 2002-05-03 | 2002-05-10 | 5d | 10d |  |  | Брызгалов Виталий [50%]; Макаров Виктор | 60h |
| 65 | 1.3 | **Интерфейс администратора** |  | 44d | 2002-03-18 | 2002-05-22 |  |  |  |  | 3d |  |  |  | 264h |
| 66 | 1.3.1 | Разработка прототипа веб приложения |  | 10d | 2002-03-18 | 2002-03-29 |  | 2002-03-18 | 2002-03-29 | 10d | 14d | 2d | start no earlier than 2002-03-18 | Каляткин Игорь [50%] | 40h |
| 67 | 1.3.2 | Daemon management |  | 10d | 2002-03-18 | 2002-03-29 |  | 2002-03-18 | 2002-03-29 | 10d | 14d | 2d | start no earlier than 2002-03-18 | Каляткин Игорь [50%] | 40h |
| 68 | 1.3.3 | Config management |  | 3d | 2002-04-03 | 2002-04-05 | 67, 66 | 2002-04-03 | 2002-04-05 | 3d | 12d | 0d | start no earlier than 2002-04-03 | Каляткин Игорь | 24h |
| 69 | 1.3.4 | Security management |  | 5d | 2002-04-08 | 2002-04-12 | 68 | 2002-04-08 | 2002-04-12 | 5d | 12d | 2d |  | Каляткин Игорь | 40h |
| 70 | 1.3.5 | Анализ модуля оперативной статитики |  | 3d | 2002-04-17 | 2002-04-19 | 69 | 2002-04-17 | 2002-04-19 | 3d | 10d | 0d | start no earlier than 2002-04-17 | Каляткин Игорь | 24h |
| 71 | 1.3.6 | Модуль оперативной статистики |  | 7d | 2002-04-22 | 2002-04-30 | 70 | 2002-04-22 | 2002-04-30 | 7d | 10d | 1d |  | Каляткин Игорь | 56h |
| 72 | 1.3.7 | Система администрирования маршрутов и алиасов |  | 5d | 2002-05-08 | 2002-05-16 | 71, 37 | 2002-05-03 | 2002-05-10 | 5d | 6.5d | 3.5d |  | Каляткин Игорь | 40h |
| 73 | 1.3.8 | Прототип системы администрирования | milestone | 0d | 2002-05-22 | 2002-05-22 | 72 | 2002-05-22 | 2002-05-22 | 0d | 3d |  | start no earlier than 2002-05-22 |  |  |
| 74 | 1.4 | **Разное** |  | 47d | 2002-03-18 | 2002-05-24 |  |  |  |  | 0d |  |  |  | 36h |
| 75 | 1.4.1 | Поддержка среды разработки |  | 45d | 2002-03-18 | 2002-05-22 |  | 2002-03-18 | 2002-05-22 | 45d | 2d |  | start no earlier than 2002-03-18 | Ступник Константин [5%]; Чен Алексей [5%] | 36h |
| 76 | 1.4.2 | Собрания |  | 47d | 2002-03-18 | 2002-05-24 |  | 2002-03-18 | 2002-05-24 | 47d | 0d |  | finish no earlier than 2002-05-24 |  |  |
| 77 | 1.4.3 | Консультации |  | 47d | 2002-03-18 | 2002-05-24 |  | 2002-03-18 | 2002-05-24 | 47d | 0d |  | start no earlier than 2002-03-18 |  |  |
